# Quad Squad

Schedule from MS Project, 2023-05-04 to 2023-08-13, A marks actual dates.

## Calendars

- Standard: Mon-Fri 08:00-12:00, 13:00-17:00; Sat-Sun off.

## Resources

| Resource |
| --- |
| Nikhil Rana |
| Aman |
| Vishal |
| Harkirat |
| Meet |

## Schedule

| ID | WBS | Task | Type | Duration | Start | Finish | Predecessors | Complete | Remaining | Actual start | Total slack | Free slack | Constraint | Resources | Work | Actual work |
| --- | --- | --- | --- | --- | --- | --- | --- | --- | --- | --- | --- | --- | --- | --- | --- | --- |
| 1 | 1 | **Capstone Project** |  | 73d? | 2023-05-04 | 2023-08-13 |  | 63% | 26.95d? | 2023-05-08 |  |  |  |  | 1094.4h | 676.8h |
| 2 | 1.1 | **Initiating** |  | 11d | 2023-05-08 A | 2023-05-22 |  | 99% | 0d |  | 0d |  |  |  | 108h | 108h |
| 3 | 1.1.1 | Identify stakeholders |  | 1d | 2023-05-08 A | 2023-05-08 A |  | 100% |  |  |  |  | finish no earlier than 2023-05-08 | Vishal [18%]; Aman [18%]; Meet [18%]; Harkirat [18%]; Nikhil Rana [18%] | 7.2h | 7.2h |
| 4 | 1.1.2 | Prepare project plan |  | 1d | 2023-05-12 A | 2023-05-12 A | 3 | 100% |  |  |  |  | finish no earlier than 2023-05-12 | Aman [90%]; Nikhil Rana [90%] | 14.4h | 14.4h |
| 5 | 1.1.3 | Prepare Meeting Agenda |  | 6d | 2023-05-15 A | 2023-05-22 A | 4 | 100% |  |  |  |  |  | Harkirat [90%]; Vishal [90%] | 86.4h | 86.4h |
| 6 | 1.1.4 | Test Strategy Submission | milestone | 0d | 2023-05-22 | 2023-05-22 | 5 |  |  |  | -1d | 0d |  |  |  |  |
| 7 | 1.2 | **Planning** |  | 16d | 2023-05-22 A | 2023-06-11 | 6 | 99% | 0d |  |  |  |  |  | 187.2h | 187.2h |
| 8 | 1.2.1 | Requirement Gathering |  | 5d | 2023-05-22 A | 2023-05-26 A |  | 100% |  |  |  |  |  |  |  |  |
| 9 | 1.2.2 | Identify project scope, objective and create a test plan |  | 5d | 2023-06-02 A | 2023-06-08 A | 8 | 100% |  |  |  |  | finish no earlier than 2023-06-08 | Aman [90%]; Meet [90%]; Harkirat [90%]; Vishal [90%]; Nikhil Rana [90%] | 180h | 180h |
| 10 | 1.2.3 | Assign roles and responsibility to the team members |  | 1d | 2023-06-09 A | 2023-06-09 A | 9 | 100% |  |  |  |  | finish no earlier than 2023-06-09 | Aman [90%] | 7.2h | 7.2h |
| 11 | 1.2.4 | Test plan submission | milestone | 0d | 2023-06-09 | 2023-06-09 | 10 |  |  |  | 0d |  |  |  |  |  |
| 12 | 1.3 | **Design and Coding** |  | 21d? | 2023-06-12 A | 2023-07-09 | 11 | 99% | 0d? |  |  |  |  |  | 295.2h | 295.2h |
| 13 | 1.3.1 | Ewheelz Setup |  | 3d | 2023-06-12 A | 2023-06-14 A |  | 100% |  |  |  |  |  | Meet [90%]; Aman [90%]; Vishal [90%] | 64.8h | 64.8h |
| 14 | 1.3.2 | Creation of DFD |  | 1d? | 2023-06-15 A | 2023-06-15 A | 13 | 100% |  |  |  |  |  | Harkirat [90%]; Meet [90%] | 14.4h | 14.4h |
| 15 | 1.3.3 | Creation of Use Case diagram |  | 4d | 2023-06-16 A | 2023-06-21 A | 14 | 100% |  |  |  |  |  | Nikhil Rana [90%]; Vishal [90%] | 57.6h | 57.6h |
| 16 | 1.3.4 | Creation of Traceability Matrix | manual | 5d | 2023-06-30 A | 2023-07-06 A | 18 | 100% |  |  |  |  |  | Aman [90%]; Vishal [90%] | 72h | 72h |
| 17 | 1.3.5 | Creation of Test Scenario | manual | 3d | 2023-06-22 A | 2023-06-26 A | 15 | 100% |  |  |  |  |  | Harkirat [90%]; Nikhil Rana [90%] | 43.2h | 43.2h |
| 18 | 1.3.6 | Creation of Use Cases | manual | 3d | 2023-06-27 A | 2023-06-29 A | 17 | 100% |  |  |  |  |  | Nikhil Rana [90%]; Vishal [90%] | 43.2h | 43.2h |
| 19 | 1.3.7 | Test Scenarios and Use Cases Submission | milestone, manual | 0d | 2023-07-07 | 2023-07-07 | 16 |  |  |  |  |  |  |  |  |  |
| 20 | 1.4 | **Testing** |  | 17d | 2023-07-07 A | 2023-07-31 | 19 | 18% | 14d |  | 0d |  |  |  | 244.8h | 86.4h |
| 21 | 1.4.1 | Preparing Test Cases |  | 3d | 2023-07-07 A | 2023-07-11 A |  | 100% |  |  |  |  | finish no earlier than 2023-07-07 | Meet [76.8%]; Vishal [76.8%]; Nikhil Rana [76.8%]; Harkirat [57.6%]; Aman [72%] | 86.4h | 86.4h |
| 22 | 1.4.2 | Test Cases and Scripts submission | milestone, manual | 0d | 2023-07-12 | 2023-07-12 | 21 |  |  |  |  |  |  |  |  |  |
| 23 | 1.4.3 | Performing testing |  | 5d | 2023-07-12 | 2023-07-18 | 21 |  |  |  | 0d |  | finish no earlier than 2023-07-14 | Meet [90%]; Nikhil Rana [90%] | 72h |  |
| 24 | 1.4.4 | Identifying and logging issues |  | 2d | 2023-07-19 | 2023-07-20 | 23 |  |  |  | 0d |  |  | Meet [90%]; Nikhil Rana [90%] | 28.8h |  |
| 25 | 1.4.5 | Assigning issue to dev for fixing |  | 1d | 2023-07-21 | 2023-07-21 | 24 |  |  |  | 0d |  |  | Aman [90%]; Nikhil Rana [90%] | 14.4h |  |
| 26 | 1.4.6 | Regression and Re-testing |  | 3d | 2023-07-24 | 2023-07-26 | 25 |  |  |  | 0d |  |  | Meet [90%]; Nikhil Rana [90%] | 43.2h |  |
| 27 | 1.4.7 | Product Release |  | 2d | 2023-07-27 | 2023-07-28 | 26 |  |  |  | 0d |  |  |  |  |  |
| 28 | 1.4.8 | Execution Report submission | manual | 1d | 2023-07-31 | 2023-07-31 | 27 |  |  |  |  |  |  |  |  |  |

| ID | WBS | Task | Type | Duration | Start | Finish | Predecessors | Total slack | Resources | Work |
| --- | --- | --- | --- | --- | --- | --- | --- | --- | --- | --- |
| 29 | 1.5 | **Project Closure** |  | 10d | 2023-07-31 | 2023-08-11 | 27 |  |  | 259.2h |
| 30 | 1.5.1 | Evaluate exit criteria |  | 5d | 2023-07-31 | 2023-08-04 |  | 0d | Aman [90%]; Vishal [90%]; Nikhil Rana [90%]; Harkirat [90%] | 144h |
| 31 | 1.5.2 | Stakeholder meeting for Feedbacks |  | 3d | 2023-08-07 | 2023-08-09 | 30 | 0d | Aman [90%]; Vishal [90%]; Nikhil Rana [90%]; Harkirat [90%] | 86.4h |
| 32 | 1.5.3 | Creation and execution of maintainance |  | 2d | 2023-08-10 | 2023-08-11 | 31 | 0d | Vishal [90%]; Harkirat [90%] | 28.8h |
| 33 | 1.5.4 | Project Closure | milestone | 0d | 2023-08-11 | 2023-08-11 | 32 | 0d |  |  |
